# Projektplan_04

Schedule from MS Project, 2014-06-02 to 2014-09-05, status date 2014-06-10, A marks actual dates.

## Calendars

- Standard: Mon-Fri 08:00-12:00, 13:00-17:00; Sat-Sun off. Exceptions (off unless hours are given): 2014-05-20 to 2014-08-30 (Frei, recurring).

## Resources

| Resource |
| --- |
| David |
| Felix |
| Tobias |
| Lukas |

## Schedule

| ID | WBS | Task | Type | Duration | Start | Finish | Predecessors | Complete | Remaining | Total slack | Free slack | Constraint | Resources | Work | Actual work | Deliverables |
| --- | --- | --- | --- | --- | --- | --- | --- | --- | --- | --- | --- | --- | --- | --- | --- | --- |
| 1 | 1 | **Wettbewerbsanalyse** |  | 3.83d | 2014-06-02 A | 2014-06-12 |  | 80% | 0.77d | 0d |  |  |  | 20.8h | 16.6h |  |
| 2 | 1.1 | Alternativen recherchieren |  | 2d | 2014-06-02 A | 2014-06-05 |  | 75% | 0.5d | 1.12d | 0d |  | Tobias [50%] | 8h | 6h | Wettbewerbsanalyse: Feature Matrix |
| 3 | 1.2 | Mediatheken explorieren |  | 2d | 2014-06-05 A | 2014-06-12 | 2 | 75% | 0.5d | 0.28d | 0.12d |  | Tobias [50%] | 8h | 6h | Wettbewerbsanalyse: Feature Matrix |
| 4 | 1.3 | Einschätzung der Mediatheken |  | 1d | 2014-06-02 A | 2014-06-03 A |  | 100% |  |  |  |  | David [50%] | 4h | 4h | Feature Matrix Mediatheken |
| 5 | 1.4 | Featurematrix erstellen |  | 0.2d | 2014-06-12 A | 2014-06-12 | 3, 4 | 75% | 0.05d | 0d |  |  | Tobias [50%] | 0.8h | 0.6h |  |
| 6 | 1.5 | Featurematrix abgeschlossen | milestone | 0d | 2014-06-12 A | 2014-06-12 | 5 | 50% | 0d | 0d |  |  | Tobias |  |  |  |
| 7 | 2 | **Mediatheken einbinden** |  | 22.43d | 2014-06-12 A | 2014-09-01 | 1 | 1% | 22.2d | 0d |  |  |  | 308h | 4h |  |
| 8 | 2.1 | API's recherchieren |  | 2d | 2014-06-12 A | 2014-06-19 |  | 25% | 1.5d | 4.5d | 0d |  | David [50%]; Lukas [50%] | 16h | 4h | How-To Mediatheken-Einbinden |
| 9 | 2.2 | **"ZDF" Mediathek** |  | 20.75d | 2014-06-19 | 2014-09-01 | 8 |  |  | 0d |  |  |  | 152h |  |  |
| 10 | 2.2.1 | **Suchen in "ZDF"** |  | 6.95d | 2014-06-19 | 2014-07-15 |  |  |  | 6.5d |  |  |  | 40h |  |  |
| 11 | 2.2.1.1 | Exploration der Suchfunktionen von "ZDF" |  | 1d | 2014-06-19 | 2014-06-23 |  |  |  | 4.5d | 0d |  | David [50%] | 4h |  |  |
| 12 | 2.2.1.2 | Entwicklung Queries |  | 3d | 2014-06-23 | 2014-07-01 | 11 |  |  | 4.92d | 0d |  | David [50%] | 12h |  |  |
| 13 | 2.2.1.3 | Parsen der Ergebnisse |  | 2d | 2014-07-01 | 2014-07-08 | 12 |  |  | 4.8d | 0d |  | David [50%] | 8h |  |  |
| 14 | 2.2.1.4 | Darstellung der Ergebnisse |  | 2d | 2014-07-08 | 2014-07-15 | 13 |  |  | 4.92d | 0d |  | David [50%]; Lukas [50%] | 16h |  |  |
| 15 | 2.2.1.5 | Suchen in Mediatheken abgeschlossen | milestone | 0d | 2014-07-15 | 2014-07-15 | 14 |  |  | 4.92d | 0d |  | David |  |  |  |
| 16 | 2.2.2 | **Browsing in "ZDF"** |  | 20.75d | 2014-06-19 | 2014-09-01 | 8 |  |  | 0d |  |  |  | 52h |  |  |
| 17 | 2.2.2.1 | Exploration der IA der Mediathek |  | 3d | 2014-06-19 | 2014-06-30 |  |  |  | 13.5d |  |  | Tobias [50%] | 12h |  |  |
| 18 | 2.2.2.2 | Entwicklung Queries |  | 3d | 2014-08-14 | 2014-08-25 | 17 |  |  | 0d |  | as late as possible | Lukas | 24h |  |  |
| 19 | 2.2.2.3 | Parsen der Ergebnisse |  | 2d | 2014-08-26 | 2014-09-01 | 18 |  |  | 0d |  |  | David | 16h |  |  |
| 20 | 2.2.2.4 | Browsing in Mediatheken abgeschlossen | milestone | 0d | 2014-09-01 | 2014-09-01 | 19 |  |  | 0d |  |  | Tobias |  |  |  |
| 21 | 2.2.3 | **Streamen von "ZDF"** |  | 6.25d | 2014-07-15 | 2014-08-05 | 15 |  |  | 6.55d | 0d |  |  | 56h |  |  |
| 22 | 2.2.3.1 | Streaming |  | 6d | 2014-07-15 | 2014-07-31 |  |  |  | 6d | 0d |  | Lukas [50%]; David [50%] | 48h |  |  |
| 23 | 2.2.3.2 | Dateitypen / Player & Grundlagen |  | 1d | 2014-07-31 | 2014-08-05 | 22 |  |  | 6.25d |  |  | Lukas [50%]; David [50%] | 8h |  |  |
| 24 | 2.2.4 | Streaming in Seite einbinden |  | 1d | 2014-08-05 | 2014-08-07 | 21 |  |  | 6.42d | 0d |  | Lukas [50%] | 4h |  |  |
| 25 | 2.2.5 | "ZDF" Mediathek eingebunden | milestone | 0d | 2014-08-07 | 2014-08-07 | 24 |  |  | 6.42d |  |  | Lukas |  |  |  |

| ID | WBS | Task | Type | Duration | Start | Finish | Predecessors | Complete | Remaining | Total slack | Free slack | Constraint | Resources | Work | Actual work |
| --- | --- | --- | --- | --- | --- | --- | --- | --- | --- | --- | --- | --- | --- | --- | --- |
| 26 | 2.3 | **"Das Erste" Mediathek** |  | 18.5d | 2014-06-19 | 2014-08-25 | 8 |  |  | 0.25d |  |  |  | 132h |  |
| 27 | 2.3.1 | **Suchen in "Das Erste"** |  | 6.95d | 2014-06-19 | 2014-07-15 |  |  |  | 4.5d |  |  |  | 40h |  |
| 28 | 2.3.1.1 | Exploration der Suchfunktionen von "Das Erste" |  | 1d | 2014-06-19 | 2014-06-23 |  |  |  | 4.5d | 0d |  | David [50%] | 4h |  |
| 29 | 2.3.1.2 | Entwicklung Queries |  | 3d | 2014-06-23 | 2014-07-01 | 28 |  |  | 4.92d | 0d |  | David [50%] | 12h |  |
| 30 | 2.3.1.3 | Parsen der Ergebnisse |  | 2d | 2014-07-01 | 2014-07-08 | 29 |  |  | 4.8d | 0d |  | David [50%] | 8h |  |
| 31 | 2.3.1.4 | Darstellung der Ergebnisse |  | 2d | 2014-07-08 | 2014-07-15 | 30 |  |  | 4.92d | 0d |  | David [50%]; Lukas [50%] | 16h |  |
| 32 | 2.3.1.5 | Suchen in Mediatheken abgeschlossen | milestone | 0d | 2014-07-15 | 2014-07-15 | 31 |  |  | 4.92d | 0d |  | David |  |  |
| 33 | 2.3.2 | **Browsing in "Das Erste"** |  | 18.5d | 2014-06-19 | 2014-08-25 |  |  |  | 0.25d |  |  |  | 32h |  |
| 34 | 2.3.2.1 | Exploration der IA's der Mediatheken |  | 1d | 2014-06-19 | 2014-06-23 |  |  |  | 13.5d |  |  | Tobias [50%] | 4h |  |
| 35 | 2.3.2.2 | Entwicklung Queries |  | 3d | 2014-08-11 | 2014-08-19 | 34 |  |  | 0d |  | as late as possible | Lukas [50%] | 12h |  |
| 36 | 2.3.2.3 | Parsen der Ergebnisse |  | 2d | 2014-08-19 | 2014-08-25 | 35 |  |  | 0d |  |  | David | 16h |  |
| 37 | 2.3.2.4 | Browsing in Mediatheken abgeschlossen | milestone | 0d | 2014-08-25 | 2014-08-25 | 36 |  |  | 0.25d |  |  | Tobias |  |  |
| 38 | 2.3.3 | **Streamen von "Das Erste"** |  | 6.25d | 2014-07-15 | 2014-08-05 | 32 |  |  | 4.8d | 0d |  |  | 56h |  |
| 39 | 2.3.3.1 | Streaming |  | 6d | 2014-07-15 | 2014-07-31 |  |  |  | 4.5d | 0d |  | Lukas [50%]; David [50%] | 48h |  |
| 40 | 2.3.3.2 | Dateitypen / Player & Grundlagen |  | 1d | 2014-07-31 | 2014-08-05 | 39 |  |  | 4.5d |  |  | Lukas [50%]; David [50%] | 8h |  |
| 41 | 2.3.4 | Streaming in Seite einbinden |  | 1d | 2014-08-05 | 2014-08-07 | 38 |  |  | 4.17d | 0d |  | Lukas [50%] | 4h |  |
| 42 | 2.3.5 | "Das Erste" Mediathek eingebunden | milestone | 0d | 2014-08-07 | 2014-08-07 | 41 |  |  | 4.42d |  |  | Lukas |  |  |
| 43 | 2.4 | Kombination Suchalgorithmen |  | 2d | 2014-08-26 | 2014-09-01 | 26 |  |  | 0d |  |  | David [50%] | 8h |  |
| 44 | 3 | **Grundgerüst der Seite** |  | 3.5d | 2014-06-02 A | 2014-06-12 A |  | 100% |  |  |  |  |  | 16h | 16h |
| 45 | 3.1 | Datenbankschema |  | 0.5d | 2014-06-02 A | 2014-06-02 A |  | 100% |  |  |  |  | Lukas [50%] | 2h | 2h |
| 46 | 3.2 | PHP Framework |  | 2d | 2014-06-03 A | 2014-06-09 A | 45 | 100% |  |  |  |  | Lukas [50%] | 8h | 8h |
| 47 | 3.3 | User Login |  | 1.5d | 2014-06-09 A | 2014-06-12 A | 46 | 100% |  |  |  |  | Lukas [50%] | 6h | 6h |
| 48 | 4 | **Interface** |  | 26.25d | 2014-06-02 A | 2014-09-01 |  | 7% | 24.31d | 0d |  |  |  | 300h | 40h |
| 49 | 4.1 | Sketching |  | 2d | 2014-06-02 A | 2014-06-05 A |  | 100% |  |  |  |  | David [50%]; Felix [50%]; Lukas [50%]; Tobias [50%] | 32h | 32h |
| 50 | 4.2 | UI Entwürfe abgschlossen | milestone | 0d | 2014-06-05 A | 2014-06-05 A | 49 | 100% |  |  |  |  | Tobias |  |  |

| ID | WBS | Task | Type | Duration | Start | Finish | Predecessors | Complete | Remaining | Total slack | Free slack | Constraint | Resources | Work | Actual work | Deliverables |
| --- | --- | --- | --- | --- | --- | --- | --- | --- | --- | --- | --- | --- | --- | --- | --- | --- |
| 51 | 4.3 | **Prototyping** |  | 2.12d | 2014-06-05 A | 2014-06-16 | 50 | 33% | 1.42d | 0d |  |  |  | 24h | 8h |  |
| 52 | 4.3.1 | Axure Prototype erstellen |  | 2d | 2014-06-05 A | 2014-06-12 |  | 50% | 1d | 0d |  |  | Felix [50%]; Tobias [50%] | 16h | 8h |  |
| 53 | 4.3.2 | Prototype testen |  | 1d | 2014-06-12 | 2014-06-16 | 52 |  |  | 0d |  |  | Felix [50%]; Tobias [50%] | 8h |  |  |
| 54 | 4.4 | **Screendesign** |  | 7.25d | 2014-06-17 | 2014-07-10 | 51 |  |  | 0d |  |  |  | 64h |  |  |
| 55 | 4.4.1 | Screendesign Startseite |  | 2d | 2014-06-17 | 2014-06-23 |  |  |  | 0d |  |  | Felix | 16h |  |  |
| 56 | 4.4.2 | Screendesign Suche |  | 2d | 2014-06-23 | 2014-06-26 | 55 |  |  | 0d |  |  | Felix | 16h |  |  |
| 57 | 4.4.3 | Screendesign Persönlicher Bereich |  | 2d | 2014-06-30 | 2014-07-03 | 56 |  |  | 0d |  |  | Felix | 16h |  |  |
| 58 | 4.4.4 | Screendesign Sendungsbereich |  | 2d | 2014-07-03 | 2014-07-10 | 57 |  |  | 0d |  |  | Felix | 16h |  |  |
| 59 | 4.4.5 | Screendesign abgeschlossen | milestone | 0d | 2014-07-10 | 2014-07-10 | 58 |  |  | 0.12d | 0d |  | Felix |  |  |  |
| 60 | 4.5 | **Technische Umsetzung** |  | 14.62d | 2014-07-10 | 2014-09-01 | 59, 46 |  |  | 0d |  |  |  | 116h |  | HTML Grundgerüst |
| 61 | 4.5.1 | **Startseite** |  | 6.88d | 2014-07-10 | 2014-08-05 |  |  |  | 0d |  |  |  | 48h |  |  |
| 62 | 4.5.1.1 | Beliebte Sendungen |  | 2d | 2014-07-10 | 2014-07-17 |  |  |  | 0d |  |  | Felix [50%]; Tobias [25%] | 12h |  |  |
| 63 | 4.5.1.2 | Neue Sendungen |  | 2d | 2014-07-17 | 2014-07-22 | 62 |  |  | 0d |  |  | Felix [50%]; Tobias [25%] | 12h |  |  |
| 64 | 4.5.1.3 | Kategorisierung |  | 2d | 2014-07-22 | 2014-07-29 | 63 |  |  | 0d |  |  | Felix [50%]; Tobias [25%] | 12h |  |  |
| 65 | 4.5.1.4 | Filterung |  | 2d | 2014-07-29 | 2014-08-05 | 64 |  |  | 0d |  |  | Felix [50%]; Tobias [25%] | 12h |  |  |
| 66 | 4.5.1.5 | Grundgerüst der Startseite abgeschlossen | milestone | 0d | 2014-08-05 | 2014-08-05 | 65 |  |  | 0d |  | as late as possible | Felix |  |  |  |
| 67 | 4.5.2 | Suche |  | 2d | 2014-07-10 | 2014-07-17 |  |  |  | 12.62d |  |  | Tobias | 16h |  |  |
| 68 | 4.5.3 | Sendung-Detailsseite |  | 2d | 2014-07-10 | 2014-07-17 |  |  |  | 12.62d |  |  | Tobias | 16h |  |  |
| 69 | 4.5.4 | **Persönlicher Bereich** |  | 14.62d | 2014-07-10 | 2014-09-01 |  |  |  | 0d |  |  |  | 36h |  |  |
| 70 | 4.5.4.1 | Dashboard (Übersicht) |  | 1d | 2014-07-10 | 2014-07-14 |  |  |  | 8.38d | 0.25d |  | Tobias | 8h |  |  |
| 71 | 4.5.4.2 | Reminder & Abos |  | 2d | 2014-07-15 | 2014-07-21 | 70 |  |  | 8.5d | 0d |  | Felix [50%] | 8h |  |  |
| 72 | 4.5.4.3 | Playlisten |  | 2d | 2014-07-21 | 2014-07-24 | 71 |  |  | 8d | 0d |  | Felix [50%] | 8h |  |  |
| 73 | 4.5.4.4 | Merkliste |  | 2d | 2014-07-28 | 2014-07-31 | 72 |  |  | 8.25d |  |  | Felix [50%]; Tobias [25%] | 12h |  |  |
| 74 | 4.5.4.5 | Grundgerüst des persönlichen Bereichs abgeschlossen | milestone | 0d | 2014-09-01 | 2014-09-01 | 73 |  |  | 0d |  | as late as possible | Felix |  |  |  |

| ID | WBS | Task | Type | Duration | Start | Finish | Predecessors | Total slack | Constraint | Resources | Work | Deliverables |
| --- | --- | --- | --- | --- | --- | --- | --- | --- | --- | --- | --- | --- |
| 75 | 4.6 | **Design-Umsetzung** |  | 5.5d | 2014-08-05 | 2014-08-25 |  | 0d |  |  | 48h | CSS |
| 76 | 4.6.1 | Umsetzung Startseite |  | 2.5d | 2014-08-05 | 2014-08-12 | 66 | 0d |  | Felix [50%]; Tobias [50%] | 20h |  |
| 77 | 4.6.2 | Umsetzung Sendung-Detailseite |  | 2d | 2014-08-12 | 2014-08-19 | 76 | 0d |  | Felix [50%]; Tobias [25%] | 12h |  |
| 78 | 4.6.3 | Umsetzung Persönlicher Bereich |  | 2d | 2014-08-19 | 2014-08-25 | 77 | 0d |  | Felix [50%]; Tobias | 16h |  |
| 79 | 4.7 | Anpassungen (Design) |  | 1d | 2014-08-26 | 2014-08-28 | 78 | 0d |  | Tobias | 8h |  |
| 80 | 4.8 | Browserspezifische Anpassungen |  | 1d | 2014-08-28 | 2014-09-01 | 79 | 0d |  | Tobias | 8h |  |
| 81 | 4.9 | Interface abgeschlossen | milestone | 0d | 2014-09-01 | 2014-09-01 | 80 | 0d | as late as possible | Tobias |  |  |
| 82 | 5 | **Testing** |  | 3.88d | 2014-09-01 | 2014-09-05 | 7, 48 | 0d |  |  | 89h |  |
| 83 | 5.1 | Softwaretests |  | 2.38d | 2014-09-01 | 2014-09-04 |  | 0d |  | David; Felix; Lukas; Tobias | 62h |  |
| 84 | 5.2 | Usability-Test |  | 0.88d | 2014-09-04 | 2014-09-05 | 83 | 0d |  | David; Felix; Lukas; Tobias | 27h |  |
